# Gantt_tabell_G26

Schedule from MS Project, 2026-01-12 to 2026-06-02.

## Calendars

- Standard: Mon-Fri 08:00-12:00, 13:00-17:00; Sat-Sun off.

## Schedule

| ID | WBS | Task | Duration | Start | Finish | Predecessors | Baseline start | Baseline finish | Baseline duration | Total slack | Deadline |
| --- | --- | --- | --- | --- | --- | --- | --- | --- | --- | --- | --- |
| 1 | 1 | **1.0 Initiering** | 22d | 2026-01-12 | 2026-02-10 |  | 2026-01-12 | 2026-02-10 | 22d | 0d |  |
| 2 | 1.1 | 1.1 Prosjektavklaring | 7d | 2026-01-12 | 2026-01-20 |  | 2026-01-12 | 2026-01-20 | 7d | 0d |  |
| 3 | 1.2 | 1.2 Proposal | 15d | 2026-01-21 | 2026-02-10 | 2 | 2026-01-21 | 2026-02-10 | 15d | 0d | 2026-02-23 |
| 4 | 1.3 | 1.3 Litteratursøk | 7d | 2026-01-21 | 2026-01-29 | 2 | 2026-01-21 | 2026-01-29 | 7d | 8d |  |
| 5 | 1.4 | 1.4 Datatilgang avklart | 15d | 2026-01-21 | 2026-02-10 | 2 | 2026-01-21 | 2026-02-10 | 15d | 0d |  |
| 6 | 2 | **2.0 Planlegging** | 27d | 2026-02-11 | 2026-03-19 |  | 2026-02-24 | 2026-03-16 | 15d | 0d |  |
| 7 | 2.1 | 2.1 Prosjektsstyringsplan | 20d | 2026-02-11 | 2026-03-10 | 3, 4, 5 | 2026-02-24 | 2026-03-04 | 7d | 0d | 2026-03-16 |
| 8 | 2.2 | 2.2 Kravspesifikasjon | 10d | 2026-02-11 | 2026-02-24 | 3, 5 | 2026-02-24 | 2026-03-09 | 10d | 10d |  |
| 9 | 2.3 | 2.3 Forskningsplan | 7d | 2026-03-11 | 2026-03-19 | 7, 8 | 2026-03-10 | 2026-03-18 | 7d | 0d |  |
| 10 | 2.4 | 2.4 WBS og Gantt | 7d | 2026-03-11 | 2026-03-19 | 7 | 2026-03-05 | 2026-03-13 | 7d | 0d |  |
| 11 | 3 | **3.0 Gjennomføring** | 39d | 2026-03-20 | 2026-05-13 |  | 2026-03-17 | 2026-04-27 | 30d? | 0d |  |
| 12 | 3.1 | 3.1 Datainnhenting | 7d | 2026-03-20 | 2026-03-30 | 9, 10 | 2026-03-19 | 2026-03-27 | 7d | 0d |  |
| 13 | 3.2 | 3.2 EDA | 7d | 2026-03-31 | 2026-04-08 | 12 | 2026-03-30 | 2026-04-07 | 7d | 0d |  |
| 14 | 3.3 | 3.3 SARIMA-modellering | 15d | 2026-04-09 | 2026-04-29 | 13 | 2026-04-08 | 2026-04-28 | 15d | 0d |  |
| 15 | 3.4 | 3.4 Varslingslogikk | 15d | 2026-04-09 | 2026-04-29 | 13 | 2026-04-08 | 2026-04-28 | 15d | 0d |  |
| 16 | 3.5 | 3.5 Validering | 10d | 2026-04-30 | 2026-05-13 | 14, 15 | 2026-04-29 | 2026-05-12 | 10d | 0d |  |
| 17 | 3.6 | 3.6 Rapportskriving | 15d | 2026-03-31 | 2026-04-20 | 12 | 2026-03-30 | 2026-04-17 | 15d | 5d | 2026-04-27 |
| 18 | 4 | **4.0 Avslutning** | 14d | 2026-05-14 | 2026-06-02 |  | 2026-04-28 | 2026-05-31 | 25d? | 0d |  |
| 19 | 4.1 | 4.1 Sluttrapport | 7d | 2026-05-14 | 2026-05-22 | 16, 17 | 2026-05-13 | 2026-05-21 | 7d | 0d | 2026-05-31 |
| 20 | 4.2 | 4.2 KI-dokumentasjon | 6d | 2026-05-25 | 2026-06-01 | 19 | 2026-05-22 | 2026-05-29 | 6d | 0d |  |
| 21 | 4.3 | 4.3 Muntlig eksamen | 1d | 2026-06-02 | 2026-06-02 | 20, 19 | 2026-06-01 | 2026-06-01 | 1d | 0d |  |
